# Children's Book Schedule

How a schedule from MS Project changed from version to version. A marks actual dates.

## Version 1 (saved 2016-01-24, file RescheduleIncompleteWork.mpp)

Note of the change: Merge

| ID | WBS | Task | Duration | Start | Finish | Predecessors | Complete | Total float | Constraint |
| --- | --- | --- | --- | --- | --- | --- | --- | --- | --- |
| 1 | 1 | **Editorial staff meeting** | 60.12d | 2018-04-16 08:00 A | 2018-07-09 09:00 |  | 54% | 140.88d |  |
| 2 |  | Editorial staff meeting 1 | 1h | 2018-04-16 08:00 A | 2018-04-16 09:00 A |  | 100% |  | start no earlier than 2018-04-16 08:00 |
| 3 |  | Editorial staff meeting 2 | 1h | 2018-04-23 08:00 A | 2018-04-23 09:00 A |  | 100% |  | start no earlier than 2018-04-23 08:00 |
| 4 |  | Editorial staff meeting 3 | 1h | 2018-04-30 08:00 A | 2018-04-30 09:00 A |  | 100% |  | start no earlier than 2018-04-30 08:00 |
| 5 |  | Editorial staff meeting 4 | 1h | 2018-05-07 08:00 A | 2018-05-07 09:00 A |  | 100% |  | start no earlier than 2018-05-07 08:00 |
| 6 |  | Editorial staff meeting 5 | 1h | 2018-05-14 08:00 A | 2018-05-14 09:00 A |  | 100% |  | start no earlier than 2018-05-14 08:00 |
| 7 |  | Editorial staff meeting 6 | 1h | 2018-05-21 08:00 A | 2018-05-21 09:00 A |  | 100% |  | start no earlier than 2018-05-21 08:00 |
| 8 |  | Editorial staff meeting 7 | 1h | 2018-05-28 08:00 A | 2018-05-28 09:00 A |  | 100% |  | start no earlier than 2018-05-28 08:00 |
| 9 |  | Editorial staff meeting 8 | 1h | 2018-06-04 08:00 | 2018-06-04 09:00 |  |  | 165.88d | start no earlier than 2018-06-04 08:00 |
| 10 |  | Editorial staff meeting 9 | 1h | 2018-06-11 08:00 | 2018-06-11 09:00 |  |  | 160.88d | start no earlier than 2018-06-11 08:00 |
| 11 |  | Editorial staff meeting 10 | 1h | 2018-06-18 08:00 | 2018-06-18 09:00 |  |  | 155.88d | start no earlier than 2018-06-18 08:00 |
| 12 |  | Editorial staff meeting 11 | 1h | 2018-06-25 08:00 | 2018-06-25 09:00 |  |  | 150.88d | start no earlier than 2018-06-25 08:00 |
| 13 |  | Editorial staff meeting 12 | 1h | 2018-07-02 08:00 | 2018-07-02 09:00 |  |  | 145.88d | start no earlier than 2018-07-02 08:00 |
| 14 |  | Editorial staff meeting 13 | 1h | 2018-07-09 08:00 | 2018-07-09 09:00 |  |  | 140.88d | start no earlier than 2018-07-09 08:00 |
| 15 | 2 | **Acquisition** | 37d | 2018-04-09 08:00 A | 2018-05-29 17:00 A |  | 100% |  |  |
| 16 |  | Manuscript received | 0d | 2018-04-09 08:00 A | 2018-04-09 08:00 A |  | 100% |  |  |
| 17 |  | Content edit | 15d | 2018-04-09 08:00 A | 2018-05-03 10:00 A | 16 | 100% |  |  |
| 18 |  | Original art review | 10.25d | 2018-04-26 10:00 A | 2018-05-10 12:00 A | 17FS-5d | 100% |  |  |
| 19 |  | Author review of content edit | 13.5d | 2018-05-10 13:00 A | 2018-05-29 17:00 A | 17, 18 | 100% |  |  |
| 20 |  | Handoff to Editorial | 0d | 2018-05-29 17:00 A | 2018-05-29 17:00 A | 19 | 100% |  |  |
| 21 | 3 | **Editorial** | 28.5d | 2018-05-30 08:00 A | 2018-07-09 12:00 A | 15 | 100% |  |  |
| 22 |  | Organize manuscript for copyedit | 5d | 2018-05-30 08:00 A | 2018-06-05 17:00 A |  | 100% |  |  |
| 23 |  | Copyedit | 10.75d | 2018-06-06 08:00 A | 2018-06-20 15:00 A | 22 | 100% |  |  |
| 24 |  | Author review of copyedit | 10d | 2018-06-20 15:00 A | 2018-07-04 15:00 A | 23 | 100% |  |  |
| 25 |  | Copyedit incorp | 5.12d | 2018-07-02 10:00 A | 2018-07-09 12:00 A | 24FS-2.5% | 100% |  |  |
| 26 |  | Handoff to Production | 0d | 2018-07-09 12:00 A | 2018-07-09 12:00 A | 25 | 100% |  |  |
| 27 | 4 | **Design and Production** | 96.5d | 2018-07-09 13:00 A | 2018-11-20 17:00 | 21 | 43% | 0d |  |
| 28 |  | Set pages | 15d | 2018-07-09 13:00 A | 2018-07-30 12:00 A |  | 100% |  |  |
| 29 |  | Interior illustration design | 17.5d | 2018-07-09 13:00 A | 2018-08-01 17:00 A | 28SS | 100% |  |  |
| 30 | 4.3 | **1st Pages review** | 66d | 2018-08-02 08:00 A | 2018-11-01 17:00 | 29 | 7% | 0d |  |
| 31 |  | Proofread and index | 10d | 2018-08-02 08:00 A | 2018-08-15 17:00 |  | 20% | 0d | start no earlier than 2018-07-20 08:00 |
| 32 |  | Incorporate 1st Pages review | 10d | 2018-08-16 08:00 | 2018-08-29 17:00 | 31 |  | 0d |  |
| 33 |  | Send proofed pages to Production | 0d | 2018-08-29 17:00 | 2018-10-18 17:00 | 32 |  | 0d | start no earlier than 2018-07-11 08:00 |
| 34 |  | Enter page corrections and index | 5d | 2018-10-19 08:00 | 2018-10-25 17:00 | 33 |  | 0d |  |
| 35 |  | Cover design | 5d | 2018-10-26 08:00 | 2018-11-01 17:00 | 34 |  | 0d |  |
| 36 | 4.4 | **2nd Pages review** | 13d | 2018-11-02 08:00 | 2018-11-20 17:00 |  |  | 0d |  |
| 37 |  | Proof and review | 6.5d | 2018-11-02 08:00 | 2018-11-12 12:00 | 35 |  | 0d |  |
| 38 |  | Send proofed pages to Production | 0d | 2018-11-12 12:00 | 2018-11-12 12:00 | 37 |  | 0d |  |
| 39 |  | Final review | 5d | 2018-11-14 08:00 | 2018-11-20 17:00 | 38 |  | 0d |  |
| 40 | 4.5 | **Design book's companion website** | 10d | 2018-11-02 08:00 | 2018-11-15 17:00 | 30 |  | 3d |  |
| 41 |  | Create mockup | 4.5d | 2018-11-02 08:00 | 2018-11-13 17:00 |  |  | 3d |  |
| 42 |  | Review with author | 2d | 2018-11-14 08:00 | 2018-11-15 17:00 | 41 |  | 3d |  |
| 43 | 5 | **Color prep and printing** | 44d | 2018-11-21 08:00 | 2019-01-21 17:00 | 40 |  | 0d |  |
| 44 |  | Send to color house | 1d | 2018-11-21 08:00 | 2018-11-21 17:00 | 36 |  | 0d |  |
| 45 |  | Generate proofs | 10d | 2018-11-22 08:00 | 2018-12-05 17:00 | 44 |  | 0d |  |
| 46 |  | Print and ship | 30d | 2018-12-11 08:00 | 2019-01-21 17:00 | 45FS+3d |  | 0d |  |
| 47 | 6 | **Book launch prep** | 22d | 2018-11-22 08:00 | 2018-12-21 17:00 |  |  | 21d |  |
| 48 |  | Launch planning | 5d | 2018-11-22 08:00 | 2018-11-28 17:00 | 44 |  | 21d |  |
| 49 |  | Assign launch team members | 1d | 2018-11-29 08:00 | 2018-11-29 17:00 | 48 |  | 21d |  |
| 50 |  | Complete author questionnaire | 5d | 2018-11-30 08:00 | 2018-12-06 17:00 | 49 |  | 21d |  |
| 51 |  | Schedule author interviews | 1d | 2018-12-07 08:00 | 2018-12-07 17:00 | 50 |  | 21d |  |
| 52 |  | Design and order marketing material | 10d | 2018-12-10 08:00 | 2018-12-21 17:00 | 51 |  | 21d |  |

## Version 2 (saved 2016-01-24, file UpdateBaseline.mpp)

Note of the change: Merge

Last finish 2019-01-21 → 2018-11-29 (-53d). Complete tasks 19 → 0.

Changed:

| ID | Task | Start | Finish | Duration | Complete | Total float | Other |
| --- | --- | --- | --- | --- | --- | --- | --- |
| 1 | **Editorial staff meeting** | 2018-04-16 08:00 A → 2018-04-16 08:00 |  |  | 54% → 0% | 140.88d → 103.75d |  |
| 2 | Editorial staff meeting 1 | 2018-04-16 08:00 A → 2018-04-16 08:00 | 2018-04-16 09:00 A → 2018-04-16 09:00 |  | 100% → 0% | none → 163.75d |  |
| 3 | Editorial staff meeting 2 | 2018-04-23 08:00 A → 2018-04-23 08:00 | 2018-04-23 09:00 A → 2018-04-23 09:00 |  | 100% → 0% | none → 158.75d |  |
| 4 | Editorial staff meeting 3 | 2018-04-30 08:00 A → 2018-04-30 08:00 | 2018-04-30 09:00 A → 2018-04-30 09:00 |  | 100% → 0% | none → 153.75d |  |
| 5 | Editorial staff meeting 4 | 2018-05-07 08:00 A → 2018-05-07 08:00 | 2018-05-07 09:00 A → 2018-05-07 09:00 |  | 100% → 0% | none → 148.75d |  |
| 6 | Editorial staff meeting 5 | 2018-05-14 08:00 A → 2018-05-14 08:00 | 2018-05-14 09:00 A → 2018-05-14 09:00 |  | 100% → 0% | none → 143.75d |  |
| 7 | Editorial staff meeting 6 | 2018-05-21 08:00 A → 2018-05-21 08:00 | 2018-05-21 09:00 A → 2018-05-21 09:00 |  | 100% → 0% | none → 138.75d |  |
| 8 | Editorial staff meeting 7 | 2018-05-28 08:00 A → 2018-05-28 08:00 | 2018-05-28 09:00 A → 2018-05-28 09:00 |  | 100% → 0% | none → 133.75d |  |
| 15 | **Acquisition** | 2018-04-09 08:00 A → 2018-04-09 08:00 | 2018-05-29 17:00 A → 2018-05-28 12:00 (-1d) | 37d → 35.5d | 100% → 0% | none → 0d | baseline finish 2018-05-28 12:00 → 2018-05-21 10:00 |
| 16 | Manuscript received | 2018-04-09 08:00 A → 2018-04-09 08:00 | 2018-04-09 08:00 A → 2018-04-09 08:00 |  | 100% → 0% | none → 0d |  |
| 17 | Content edit | 2018-04-09 08:00 A → 2018-04-09 08:00 | 2018-05-03 10:00 A → 2018-05-03 10:00 |  | 100% → 0% | none → 0d |  |
| 18 | Original art review | 2018-04-26 10:00 A → 2018-04-26 10:00 | 2018-05-10 12:00 A → 2018-05-10 12:00 |  | 100% → 0% | none → 0d | baseline start 2018-04-26 10:00 → none; baseline finish 2018-05-10 12:00 → none |
| 19 | Author review of content edit | 2018-05-10 13:00 A → 2018-05-10 13:00 | 2018-05-29 17:00 A → 2018-05-28 12:00 (-1d) | 13.5d → 12d | 100% → 0% | none → 0d | baseline start 2018-05-10 13:00 → 2018-05-03 10:00; baseline finish 2018-05-28 12:00 → 2018-05-21 10:00 |
| 20 | Handoff to Editorial | 2018-05-29 17:00 A → 2018-05-28 12:00 (-1d) | 2018-05-29 17:00 A → 2018-05-28 12:00 (-1d) |  | 100% → 0% | none → 0d | baseline start 2018-05-28 12:00 → 2018-05-21 10:00; baseline finish 2018-05-28 12:00 → 2018-05-21 10:00 |
| 21 | **Editorial** | 2018-05-30 08:00 A → 2018-05-28 13:00 (-2d) | 2018-07-09 12:00 A → 2018-07-06 14:00 (-3d) | 28.5d → 29.12d | 100% → 0% | none → 0d | baseline start 2018-05-28 13:00 → 2018-05-21 10:00; baseline finish 2018-07-06 14:00 → 2018-06-29 11:00 |
| 22 | Organize manuscript for copyedit | 2018-05-30 08:00 A → 2018-05-28 13:00 (-2d) | 2018-06-05 17:00 A → 2018-06-04 14:00 (-1d) | 5d → 5.12d | 100% → 0% | none → 0d | baseline start 2018-05-28 13:00 → 2018-05-21 10:00; baseline finish 2018-06-04 14:00 → 2018-05-28 11:00 |
| 23 | Copyedit | 2018-06-06 08:00 A → 2018-06-04 14:00 (-2d) | 2018-06-20 15:00 A → 2018-06-19 16:00 (-1d) | 10.75d → 11.25d | 100% → 0% | none → 0d | baseline start 2018-06-04 14:00 → 2018-05-28 11:00; baseline finish 2018-06-19 16:00 → 2018-06-12 14:00 |
| 24 | Author review of copyedit | 2018-06-20 15:00 A → 2018-06-19 16:00 (-1d) | 2018-07-04 15:00 A → 2018-07-03 16:00 (-1d) |  | 100% → 0% | none → 0d | baseline start 2018-06-19 16:00 → 2018-06-12 14:00; baseline finish 2018-07-03 16:00 → 2018-06-26 14:00 |
| 25 | Copyedit incorp | 2018-07-02 10:00 A → 2018-06-29 11:00 (-3d) | 2018-07-09 12:00 A → 2018-07-06 14:00 (-3d) |  | 100% → 0% | none → 0d | baseline start 2018-06-29 11:00 → 2018-06-22 09:00; baseline finish 2018-07-06 14:00 → 2018-06-29 11:00 |
| 26 | Handoff to Production | 2018-07-09 12:00 A → 2018-07-06 14:00 (-3d) | 2018-07-09 12:00 A → 2018-07-06 14:00 (-3d) |  | 100% → 0% | none → 0d | baseline start 2018-07-06 14:00 → 2018-06-29 11:00; baseline finish 2018-07-06 14:00 → 2018-06-29 11:00 |
| 27 | **Design and Production** | 2018-07-09 13:00 A → 2018-07-06 14:00 (-3d) | 2018-11-20 17:00 → 2018-09-26 16:00 (-55d) | 96.5d → 58.25d | 43% → 0% |  | baseline start 2018-07-06 14:00 → 2018-06-29 11:00; baseline finish 2018-09-26 16:00 → 2018-09-12 14:00 |
| 28 | Set pages | 2018-07-09 13:00 A → 2018-07-06 14:00 (-3d) | 2018-07-30 12:00 A → 2018-07-27 14:00 (-3d) |  | 100% → 0% | none → 0d | baseline start 2018-07-06 14:00 → 2018-06-29 11:00; baseline finish 2018-07-27 14:00 → 2018-07-20 11:00 |
| 29 | Interior illustration design | 2018-07-09 13:00 A → 2018-07-06 14:00 (-3d) | 2018-08-01 17:00 A → 2018-07-27 16:00 (-5d) | 17.5d → 15.25d | 100% → 0% | none → 0d | baseline start 2018-07-06 14:00 → 2018-06-29 11:00; baseline finish 2018-07-27 16:00 → 2018-07-20 14:00 |
| 30 | **1st Pages review** | 2018-08-02 08:00 A → 2018-07-27 16:00 (-6d) | 2018-11-01 17:00 → 2018-09-07 16:00 (-55d) | 66d → 30d | 7% → 0% |  | baseline start 2018-07-27 16:00 → 2018-07-20 14:00; baseline finish 2018-09-07 16:00 → 2018-08-24 14:00 |
| 31 | Proofread and index | 2018-08-02 08:00 A → 2018-07-27 16:00 (-6d) | 2018-08-15 17:00 → 2018-08-10 16:00 (-5d) |  | 20% → 0% |  | baseline start 2018-07-27 16:00 → 2018-07-20 14:00; baseline finish 2018-08-10 16:00 → 2018-08-03 14:00 |
| 32 | Incorporate 1st Pages review | 2018-08-16 08:00 → 2018-08-10 16:00 (-6d) | 2018-08-29 17:00 → 2018-08-24 16:00 (-5d) |  |  |  | baseline start 2018-08-10 16:00 → 2018-08-03 14:00; baseline finish 2018-08-24 16:00 → 2018-08-10 14:00 |
| 33 | Send proofed pages to Production | 2018-08-29 17:00 → 2018-08-24 16:00 (-5d) | 2018-10-18 17:00 → 2018-08-24 16:00 (-55d) |  |  |  | constraint start no earlier than 2018-07-11 08:00 → none; baseline start 2018-08-24 16:00 → 2018-08-10 14:00; baseline finish 2018-08-24 16:00 → 2018-08-10 14:00 |
| 34 | Enter page corrections and index | 2018-10-19 08:00 → 2018-08-24 16:00 (-56d) | 2018-10-25 17:00 → 2018-08-31 16:00 (-55d) |  |  |  | baseline start 2018-08-24 16:00 → 2018-08-10 14:00; baseline finish 2018-08-31 16:00 → 2018-08-17 14:00 |
| 35 | Cover design | 2018-10-26 08:00 → 2018-08-31 16:00 (-56d) | 2018-11-01 17:00 → 2018-09-07 16:00 (-55d) |  |  |  | baseline start 2018-08-31 16:00 → 2018-08-17 14:00; baseline finish 2018-09-07 16:00 → 2018-08-24 14:00 |
| 36 | **2nd Pages review** | 2018-11-02 08:00 → 2018-09-07 16:00 (-56d) | 2018-11-20 17:00 → 2018-09-26 16:00 (-55d) |  |  |  | baseline start 2018-09-07 16:00 → 2018-08-24 14:00; baseline finish 2018-09-26 16:00 → 2018-09-12 14:00 |
| 37 | Proof and review | 2018-11-02 08:00 → 2018-09-07 16:00 (-56d) | 2018-11-12 12:00 → 2018-09-18 11:00 (-55d) |  |  |  | baseline start 2018-09-07 16:00 → 2018-08-24 14:00; baseline finish 2018-09-18 11:00 → 2018-09-04 09:00 |
| 38 | Send proofed pages to Production | 2018-11-12 12:00 → 2018-09-18 11:00 (-55d) | 2018-11-12 12:00 → 2018-09-18 11:00 (-55d) |  |  |  | baseline start 2018-09-18 11:00 → 2018-09-04 09:00; baseline finish 2018-09-18 11:00 → 2018-09-04 09:00 |
| 39 | Final review | 2018-11-14 08:00 → 2018-09-19 16:00 (-56d) | 2018-11-20 17:00 → 2018-09-26 16:00 (-55d) |  |  |  | baseline start 2018-09-19 16:00 → 2018-09-05 14:00; baseline finish 2018-09-26 16:00 → 2018-09-12 14:00 |
| 40 | **Design book's companion website** | 2018-11-02 08:00 → 2018-09-07 16:00 (-56d) | 2018-11-15 17:00 → 2018-09-21 16:00 (-55d) |  |  |  | baseline start 2018-09-07 16:00 → 2018-08-24 14:00; baseline finish 2018-09-21 16:00 → 2018-09-07 14:00 |
| 41 | Create mockup | 2018-11-02 08:00 → 2018-09-07 16:00 (-56d) | 2018-11-13 17:00 → 2018-09-19 16:00 (-55d) |  |  |  | baseline start 2018-09-07 16:00 → 2018-08-24 14:00; baseline finish 2018-09-19 16:00 → 2018-09-05 14:00 |
| 42 | Review with author | 2018-11-14 08:00 → 2018-09-19 16:00 (-56d) | 2018-11-15 17:00 → 2018-09-21 16:00 (-55d) |  |  |  | baseline start 2018-09-19 16:00 → 2018-09-05 14:00; baseline finish 2018-09-21 16:00 → 2018-09-07 14:00 |
| 43 | **Color prep and printing** | 2018-11-21 08:00 → 2018-09-26 16:00 (-56d) | 2019-01-21 17:00 → 2018-11-29 16:00 (-53d) | 44d → 46d |  |  | baseline start 2018-09-26 16:00 → 2018-09-12 14:00; baseline finish 2018-11-29 16:00 → 2018-11-15 14:00 |
| 44 | Send to color house | 2018-11-21 08:00 → 2018-09-26 16:00 (-56d) | 2018-11-21 17:00 → 2018-10-01 16:00 (-51d) |  |  |  | baseline start 2018-09-26 16:00 → 2018-09-12 14:00; baseline finish 2018-10-01 16:00 → 2018-09-17 14:00 |
| 45 | Generate proofs | 2018-11-22 08:00 → 2018-10-01 16:00 (-52d) | 2018-12-05 17:00 → 2018-10-15 16:00 (-51d) |  |  |  | baseline start 2018-10-01 16:00 → 2018-09-17 14:00; baseline finish 2018-10-15 16:00 → 2018-10-01 14:00 |
| 46 | Print and ship | 2018-12-11 08:00 → 2018-10-18 16:00 (-54d) | 2019-01-21 17:00 → 2018-11-29 16:00 (-53d) |  |  |  | baseline start 2018-10-18 16:00 → 2018-10-04 14:00; baseline finish 2018-11-29 16:00 → 2018-11-15 14:00 |
| 47 | **Book launch prep** | 2018-11-22 08:00 → 2018-10-01 16:00 (-52d) | 2018-12-21 17:00 → 2018-10-31 16:00 (-51d) |  |  |  | baseline start 2018-10-01 16:00 → 2018-09-07 14:00; baseline finish 2018-10-31 16:00 → 2018-10-05 14:00 |
| 48 | Launch planning | 2018-11-22 08:00 → 2018-10-01 16:00 (-52d) | 2018-11-28 17:00 → 2018-10-08 16:00 (-51d) |  |  |  | baseline start 2018-10-01 16:00 → 2018-09-07 14:00; baseline finish 2018-10-08 16:00 → 2018-09-19 14:00 |
| 49 | Assign launch team members | 2018-11-29 08:00 → 2018-10-08 16:00 (-52d) | 2018-11-29 17:00 → 2018-10-09 16:00 (-51d) |  |  |  | baseline start 2018-10-08 16:00 → 2018-09-19 14:00; baseline finish 2018-10-09 16:00 → 2018-09-20 14:00 |
| 50 | Complete author questionnaire | 2018-11-30 08:00 → 2018-10-09 16:00 (-52d) | 2018-12-06 17:00 → 2018-10-16 16:00 (-51d) |  |  |  | baseline start 2018-10-09 16:00 → 2018-09-20 14:00; baseline finish 2018-10-16 16:00 → 2018-09-27 14:00 |
| 51 | Schedule author interviews | 2018-12-07 08:00 → 2018-10-16 16:00 (-52d) | 2018-12-07 17:00 → 2018-10-17 16:00 (-51d) |  |  |  | baseline start 2018-10-16 16:00 → 2018-09-27 14:00; baseline finish 2018-10-17 16:00 → 2018-09-28 14:00 |
| 52 | Design and order marketing material | 2018-12-10 08:00 → 2018-10-17 16:00 (-54d) | 2018-12-21 17:00 → 2018-10-31 16:00 (-51d) |  |  |  | baseline start 2018-10-17 16:00 → 2018-09-28 14:00; baseline finish 2018-10-31 16:00 → 2018-10-05 14:00 |

## Version 3 (saved 2016-01-24, file TrackWork.mpp)

Note of the change: Merge

Last finish stays 2018-11-29. Complete tasks 0 → 4.

Changed:

| ID | Task | Start | Finish | Complete | Total float | Other |
| --- | --- | --- | --- | --- | --- | --- |
| 1 | **Editorial staff meeting** | 2018-04-16 08:00 A |  | 0% → 15% |  |  |
| 2 | Editorial staff meeting 1 | 2018-04-16 08:00 A | 2018-04-16 09:00 A | 0% → 100% | 163.75d → none |  |
| 3 | Editorial staff meeting 2 | 2018-04-23 08:00 A | 2018-04-23 09:00 A | 0% → 100% | 158.75d → none |  |
| 15 | **Acquisition** | 2018-04-09 08:00 A |  | 0% → 40% |  | baseline finish 2018-05-21 10:00 → 2018-05-28 12:00 |
| 16 | Manuscript received | 2018-04-09 08:00 A | 2018-04-09 08:00 A | 0% → 100% | 0d → none |  |
| 17 | Content edit | 2018-04-09 08:00 A | 2018-05-03 10:00 A | 0% → 100% | 0d → none |  |
| 18 | Original art review |  |  |  |  | baseline start none → 2018-04-26 10:00; baseline finish none → 2018-05-10 12:00 |
| 19 | Author review of content edit |  |  |  |  | baseline start 2018-05-03 10:00 → 2018-05-10 13:00; baseline finish 2018-05-21 10:00 → 2018-05-28 12:00 |
| 20 | Handoff to Editorial |  |  |  |  | baseline start 2018-05-21 10:00 → 2018-05-28 12:00; baseline finish 2018-05-21 10:00 → 2018-05-28 12:00 |
| 21 | **Editorial** |  |  |  |  | baseline start 2018-05-21 10:00 → 2018-05-28 13:00; baseline finish 2018-06-29 11:00 → 2018-07-06 14:00 |
| 22 | Organize manuscript for copyedit |  |  |  |  | baseline start 2018-05-21 10:00 → 2018-05-28 13:00; baseline finish 2018-05-28 11:00 → 2018-06-04 14:00 |
| 23 | Copyedit |  |  |  |  | baseline start 2018-05-28 11:00 → 2018-06-04 14:00; baseline finish 2018-06-12 14:00 → 2018-06-19 16:00 |
| 24 | Author review of copyedit |  |  |  |  | baseline start 2018-06-12 14:00 → 2018-06-19 16:00; baseline finish 2018-06-26 14:00 → 2018-07-03 16:00 |
| 25 | Copyedit incorp |  |  |  |  | baseline start 2018-06-22 09:00 → 2018-06-29 11:00; baseline finish 2018-06-29 11:00 → 2018-07-06 14:00 |
| 26 | Handoff to Production |  |  |  |  | baseline start 2018-06-29 11:00 → 2018-07-06 14:00; baseline finish 2018-06-29 11:00 → 2018-07-06 14:00 |
| 27 | **Design and Production** |  |  |  |  | baseline start 2018-06-29 11:00 → 2018-07-06 14:00; baseline finish 2018-09-12 14:00 → 2018-09-26 16:00 |
| 28 | Set pages |  |  |  |  | baseline start 2018-06-29 11:00 → 2018-07-06 14:00; baseline finish 2018-07-20 11:00 → 2018-07-27 14:00 |
| 29 | Interior illustration design |  |  |  |  | baseline start 2018-06-29 11:00 → 2018-07-06 14:00; baseline finish 2018-07-20 14:00 → 2018-07-27 16:00 |
| 30 | **1st Pages review** |  |  |  |  | baseline start 2018-07-20 14:00 → 2018-07-27 16:00; baseline finish 2018-08-24 14:00 → 2018-09-07 16:00 |
| 31 | Proofread and index |  |  |  |  | baseline start 2018-07-20 14:00 → 2018-07-27 16:00; baseline finish 2018-08-03 14:00 → 2018-08-10 16:00 |
| 32 | Incorporate 1st Pages review |  |  |  |  | baseline start 2018-08-03 14:00 → 2018-08-10 16:00; baseline finish 2018-08-10 14:00 → 2018-08-24 16:00 |
| 33 | Send proofed pages to Production |  |  |  |  | baseline start 2018-08-10 14:00 → 2018-08-24 16:00; baseline finish 2018-08-10 14:00 → 2018-08-24 16:00 |
| 34 | Enter page corrections and index |  |  |  |  | baseline start 2018-08-10 14:00 → 2018-08-24 16:00; baseline finish 2018-08-17 14:00 → 2018-08-31 16:00 |
| 35 | Cover design |  |  |  |  | baseline start 2018-08-17 14:00 → 2018-08-31 16:00; baseline finish 2018-08-24 14:00 → 2018-09-07 16:00 |
| 36 | **2nd Pages review** |  |  |  |  | baseline start 2018-08-24 14:00 → 2018-09-07 16:00; baseline finish 2018-09-12 14:00 → 2018-09-26 16:00 |
| 37 | Proof and review |  |  |  |  | baseline start 2018-08-24 14:00 → 2018-09-07 16:00; baseline finish 2018-09-04 09:00 → 2018-09-18 11:00 |
| 38 | Send proofed pages to Production |  |  |  |  | baseline start 2018-09-04 09:00 → 2018-09-18 11:00; baseline finish 2018-09-04 09:00 → 2018-09-18 11:00 |
| 39 | Final review |  |  |  |  | baseline start 2018-09-05 14:00 → 2018-09-19 16:00; baseline finish 2018-09-12 14:00 → 2018-09-26 16:00 |
| 40 | **Design book's companion website** |  |  |  |  | baseline start 2018-08-24 14:00 → 2018-09-07 16:00; baseline finish 2018-09-07 14:00 → 2018-09-21 16:00 |
| 41 | Create mockup |  |  |  |  | baseline start 2018-08-24 14:00 → 2018-09-07 16:00; baseline finish 2018-09-05 14:00 → 2018-09-19 16:00 |
| 42 | Review with author |  |  |  |  | baseline start 2018-09-05 14:00 → 2018-09-19 16:00; baseline finish 2018-09-07 14:00 → 2018-09-21 16:00 |
| 43 | **Color prep and printing** |  |  |  |  | baseline start 2018-09-12 14:00 → 2018-09-26 16:00; baseline finish 2018-11-15 14:00 → 2018-11-29 16:00 |
| 44 | Send to color house |  |  |  |  | baseline start 2018-09-12 14:00 → 2018-09-26 16:00; baseline finish 2018-09-17 14:00 → 2018-10-01 16:00 |
| 45 | Generate proofs |  |  |  |  | baseline start 2018-09-17 14:00 → 2018-10-01 16:00; baseline finish 2018-10-01 14:00 → 2018-10-15 16:00 |
| 46 | Print and ship |  |  |  |  | baseline start 2018-10-04 14:00 → 2018-10-18 16:00; baseline finish 2018-11-15 14:00 → 2018-11-29 16:00 |
| 47 | **Book launch prep** |  |  |  |  | baseline start 2018-09-07 14:00 → 2018-10-01 16:00; baseline finish 2018-10-05 14:00 → 2018-10-31 16:00 |
| 48 | Launch planning |  |  |  |  | baseline start 2018-09-07 14:00 → 2018-10-01 16:00; baseline finish 2018-09-19 14:00 → 2018-10-08 16:00 |
| 49 | Assign launch team members |  |  |  |  | baseline start 2018-09-19 14:00 → 2018-10-08 16:00; baseline finish 2018-09-20 14:00 → 2018-10-09 16:00 |
| 50 | Complete author questionnaire |  |  |  |  | baseline start 2018-09-20 14:00 → 2018-10-09 16:00; baseline finish 2018-09-27 14:00 → 2018-10-16 16:00 |
| 51 | Schedule author interviews |  |  |  |  | baseline start 2018-09-27 14:00 → 2018-10-16 16:00; baseline finish 2018-09-28 14:00 → 2018-10-17 16:00 |
| 52 | Design and order marketing material |  |  |  |  | baseline start 2018-09-28 14:00 → 2018-10-17 16:00; baseline finish 2018-10-05 14:00 → 2018-10-31 16:00 |
